# caTRIP_Project_Plan

Schedule from MS Project, 2006-05-01 to 2006-11-03, A marks actual dates.
Duke University

## Calendars

- Standard: Mon-Fri 08:00-12:00, 13:00-17:00; Sat-Sun off.

## Resources

| Resource |
| --- |
| Jeff |
| Patrick |
| Bob |
| Ram |
| Raj |
| Mark |
| Chris |
| Mark.Chris |
| Bioinformatics |
| domain expert |
| Jamie |
| Everyone |
| SB |
| Srini |
| Sanjeev |
| Bill |
| Vinay |
| Janet |
| TBD |

## Schedule

| ID | WBS | Task | Duration | Start | Finish | Predecessors | Complete | Remaining | Total slack | Constraint | Resources | Work | Actual work |
| --- | --- | --- | --- | --- | --- | --- | --- | --- | --- | --- | --- | --- | --- |
| 1 | 1 | **Phase I** | 135d? | 2006-05-01 A | 2006-11-03 |  | 15% | 114.98d? | 0d |  |  | 24810.7h | 3670.54h |
| 2 | 1.1 | **Inception** | 25d | 2006-05-01 A | 2006-06-02 |  | 75% | 6.2d | 0d |  |  | 4472h | 3616.67h |
| 3 | 1.1.1 | Install MS Project Server | 25d | 2006-05-01 | 2006-06-02 |  |  |  | 0d |  | Jeff | 200h |  |
| 4 | 1.1.2 | Draft project management plan | 25d | 2006-05-01 A | 2006-06-02 A |  | 100% |  |  |  | Patrick; Bob; Ram | 600h | 600h |
| 5 | 1.1.3 | Develop phase and iteration plan | 10d | 2006-05-01 A | 2006-05-12 A |  | 100% |  |  | finish no earlier than 2006-05-12 | SB | 80h | 80h |
| 6 | 1.1.4 | Draft communications plan | 25d | 2006-05-01 A | 2006-06-02 A |  | 100% |  |  |  | Patrick; Bob; Ram | 600h | 600h |
| 7 | 1.1.5 | Draft risk management matrix | 25d | 2006-05-01 A | 2006-06-02 A |  | 100% |  |  |  | Patrick; Ram | 400h | 400h |
| 8 | 1.1.6 | Develop scope and vision document | 12d | 2006-05-11 A | 2006-05-26 A |  | 100% |  |  | finish no earlier than 2006-05-26 | Patrick | 96h | 96h |
| 9 | 1.1.7 | Draft test plan | 25d | 2006-05-01 A | 2006-06-02 A |  | 100% |  |  |  | Patrick; Bob | 400h | 400h |
| 10 | 1.1.8 | Setup Gforge | 10d | 2006-05-01 A | 2006-05-12 A |  | 100% |  |  |  | Patrick | 80h | 80h |
| 11 | 1.1.9 | Setup development environment | 10d | 2006-05-15 A | 2006-05-26 A | 10 | 100% |  |  |  | Patrick | 80h | 80h |
| 12 | 1.1.10 | Define initial problem scenerios | 25d | 2006-05-01 A | 2006-06-02 A |  | 100% |  |  |  | Patrick; Bob; Raj | 600h | 600h |
| 13 | 1.1.11 | Define problem scenarios | 2d | 2006-05-24 A | 2006-05-25 A |  | 100% |  |  | finish no earlier than 2006-05-25 | Raj; Bob | 32h | 32h |
| 14 | 1.1.12 | Define initial scientific use cases | 20d | 2006-05-01 | 2006-05-26 |  |  |  | 5d |  | Patrick; Bob; Raj | 480h |  |
| 15 | 1.1.13 | Define initial system use cases | 20d | 2006-05-01 | 2006-05-26 |  |  |  | 5d |  | SB | 160h |  |
| 16 | 1.1.14 | Define initial datasets | 20d | 2006-05-01 A | 2006-05-26 A |  | 100% |  |  |  | Patrick; Bob; Raj | 480h | 480h |
| 17 | 1.1.15 | **Setup testbed** | 11d | 2006-05-01 A | 2006-05-15 |  | 92% | 0.92d | 14d |  | Jeff | 184h | 168.67h |
| 18 | 1.1.15.1 | Purchase testbed | 10d | 2006-05-01 A | 2006-05-12 A |  | 100% |  |  |  | Jeff | 80h | 80h |
| 19 | 1.1.15.2 | Add testbed to backup cycle | 1d | 2006-05-15 A | 2006-05-15 A | 18 | 100% |  |  |  | Jeff | 8h | 8h |
| 20 | 1.1.15.3 | Image testbed after basic environment is set up | 1d | 2006-05-15 | 2006-05-15 | 18 |  |  | 14d |  | Jeff | 8h |  |
| 21 | 1.2 | **Elaboration** | 60d? | 2006-06-05 A | 2006-08-25 | 2 |  | 59.92d? | 0d |  |  | 16262.7h | 53.87h |
| 22 | 1.2.1 | **Iteration 1** | 30d? | 2006-06-05 A | 2006-07-14 |  |  | 29.92d? | 0d |  |  | 8976h | 53.87h |
| 23 | 1.2.1.1 | **Draft use case document** | 30d? | 2006-06-05 | 2006-07-14 |  |  |  | 0d |  |  | 608h |  |
| 24 | 1.2.1.1.1 | Finalize scientific use cases | 30d? | 2006-06-05 | 2006-07-14 |  |  |  | 0d | finish no earlier than 2006-07-07 | SB | 240h |  |
| 25 | 1.2.1.1.2 | Finalize system use cases | 15d? | 2006-06-19 | 2006-07-07 |  |  |  | 5d | finish no earlier than 2006-07-07 | Sanjeev; Bill | 240h |  |
| 26 | 1.2.1.1.3 | Draft use cases | 8d | 2006-06-05 | 2006-06-14 |  |  |  | 22d | finish no earlier than 2006-06-01 | Patrick; Bob | 128h |  |

| ID | WBS | Task | Duration | Start | Finish | Predecessors | Complete | Remaining | Total slack | Free slack | Constraint | Resources | Work | Actual work |
| --- | --- | --- | --- | --- | --- | --- | --- | --- | --- | --- | --- | --- | --- | --- |
| 27 | 1.2.1.2 | **Draft requirements and specifications document** | 10d | 2006-06-05 | 2006-06-16 |  |  |  | 20d |  |  | Patrick; Bill; Ram | 520h |  |
| 28 | 1.2.1.2.1 | Translate use cases into requirements | 5d | 2006-06-05 | 2006-06-09 |  |  |  | 20d | 0d |  | Patrick; Bill | 80h |  |
| 29 | 1.2.1.2.2 | Create test traceability matrix | 5d | 2006-06-12 | 2006-06-16 | 28 |  |  | 20d |  |  | Patrick | 40h |  |
| 30 | 1.2.1.2.3 | Draft architecture UML diagrams | 10d | 2006-06-05 | 2006-06-16 |  |  |  | 20d |  |  | Patrick; Ram | 160h |  |
| 31 | 1.2.1.3 | Draft dataset document (draft) | 20d | 2006-06-05 | 2006-06-30 |  |  |  | 10d |  |  | Patrick; Bob; Mark | 480h |  |
| 32 | 1.2.1.4 | **Dataset preparation** | 27d | 2006-06-05 A | 2006-07-11 |  | 3% | 26.32d | 3d |  |  | Raj; Bob; Mark; Patrick | 1628h | 53.87h |
| 33 | 1.2.1.4.1 | **Dataset acquisition** | 7d | 2006-06-05 A | 2006-06-13 |  | 14% | 6d | 3d | 0d |  | Raj; Bob | 184h | 32h |
| 34 | 1.2.1.4.1.1 | Determine available datasets | 1d | 2006-06-05 A | 2006-06-05 A |  | 100% |  |  |  | finish no earlier than 2006-05-25 | Raj; Bob | 16h | 16h |
| 35 | 1.2.1.4.1.2 | Match datasets to use cases | 1d | 2006-06-06 | 2006-06-06 | 34 |  |  | 3d | 0d |  | Raj; Bob | 16h |  |
| 36 | 1.2.1.4.1.3 | Fill out IRB forms | 5d | 2006-06-07 | 2006-06-13 | 35 |  |  | 3d |  |  | Bob | 40h |  |
| 37 | 1.2.1.4.2 | **MAW3** | 12.5d | 2006-06-14 | 2006-06-30 | 33 |  |  | 10.5d |  |  | Mark | 260h |  |
| 38 | 1.2.1.4.2.1 | Document CDE usage | 2.5d | 2006-06-14 | 2006-06-16 |  |  |  | 10.5d | 0d |  | Mark; Chris | 40h |  |
| 39 | 1.2.1.4.2.2 | Dataset deidentification | 5d | 2006-06-16 | 2006-06-23 | 38 |  |  | 10.5d | 0d |  | Mark; Chris | 80h |  |
| 40 | 1.2.1.4.2.3 | Expose database | 5d | 2006-06-23 | 2006-06-30 | 39 |  |  | 10.5d |  |  | Mark.Chris | 40h |  |
| 41 | 1.2.1.4.3 | **DSR** | 20d | 2006-06-14 | 2006-07-11 | 33 |  |  | 3d |  |  | Mark | 320h |  |
| 42 | 1.2.1.4.3.1 | CDE document | 5d | 2006-06-14 | 2006-06-20 |  |  |  | 3d | 0d |  | Mark | 40h |  |
| 43 | 1.2.1.4.3.2 | Dataset deidentification | 10d | 2006-06-21 | 2006-07-04 | 42 |  |  | 3d | 0d |  | Mark | 80h |  |
| 44 | 1.2.1.4.3.3 | Expose database | 5d | 2006-07-05 | 2006-07-11 | 43 |  |  | 3d |  |  | Mark | 40h |  |
| 45 | 1.2.1.5 | **Tool installation** | 22.5d | 2006-06-05 | 2006-07-05 |  |  |  | 7.5d |  |  | Bioinformatics; Mark; Bill; Sanjeev | 2260h |  |
| 46 | 1.2.1.5.1 | Install and configure caGrid 1.0 infrastructure | 5d | 2006-06-05 | 2006-06-09 |  |  |  | 25d |  | start no earlier than 2006-05-29 | Sanjeev | 40h |  |
| 47 | 1.2.1.5.2 | **caTissue Core** | 22.5d | 2006-06-05 | 2006-07-05 |  |  |  | 7.5d |  |  | Bioinformatics; Mark; Bill | 740h |  |
| 48 | 1.2.1.5.2.1 | Document CDE extension | 5d | 2006-06-05 | 2006-06-09 |  |  |  | 5d | 0d |  | Mark | 40h |  |
| 49 | 1.2.1.5.2.2 | Extend model | 5d | 2006-06-12 | 2006-06-16 | 48 |  |  | 5d | 0d |  | Mark | 40h |  |
| 50 | 1.2.1.5.2.3 | Apply model to tool | 5d | 2006-06-19 | 2006-06-23 | 49 |  |  | 5d | 0d |  | Bioinformatics | 40h |  |
| 51 | 1.2.1.5.2.4 | Develop and Install data service | 2.5d | 2006-06-26 | 2006-06-28 | 50 |  |  | 7.5d | 0d |  | Bioinformatics; Bill | 40h |  |
| 52 | 1.2.1.5.2.5 | Install tool | 5d | 2006-06-28 | 2006-07-05 | 51 |  |  | 7.5d |  |  | Bioinformatics | 40h |  |

| ID | WBS | Task | Duration | Start | Finish | Predecessors | Total slack | Free slack | Constraint | Resources | Work |
| --- | --- | --- | --- | --- | --- | --- | --- | --- | --- | --- | --- |
| 53 | 1.2.1.5.3 | **CAE** | 22.5d | 2006-06-05 | 2006-07-05 |  | 7.5d |  |  |  | 200h |
| 54 | 1.2.1.5.3.1 | Document CDE extension | 5d | 2006-06-05 | 2006-06-09 |  | 7.5d | 0d |  | Mark | 40h |
| 55 | 1.2.1.5.3.2 | Extend model | 5d | 2006-06-12 | 2006-06-16 | 54 | 7.5d | 0d |  | Mark | 40h |
| 56 | 1.2.1.5.3.3 | Apply model to tool | 5d | 2006-06-19 | 2006-06-23 | 55 | 7.5d | 0d |  | Bioinformatics | 40h |
| 57 | 1.2.1.5.3.4 | Develop and Install data service | 2.5d | 2006-06-26 | 2006-06-28 | 56 | 7.5d | 0d |  | Bioinformatics; Bill | 40h |
| 58 | 1.2.1.5.3.5 | Install tool | 5d | 2006-06-28 | 2006-07-05 | 57 | 7.5d |  |  | Bioinformatics | 40h |
| 59 | 1.2.1.5.4 | **caTIES** | 22.5d | 2006-06-05 | 2006-07-05 |  | 7.5d |  |  | Bioinformatics; Mark | 560h |
| 60 | 1.2.1.5.4.1 | Document CDE extension | 5d | 2006-06-05 | 2006-06-09 |  | 7.5d | 0d |  | Mark | 40h |
| 61 | 1.2.1.5.4.2 | Extend model | 5d | 2006-06-12 | 2006-06-16 | 60 | 7.5d | 0d |  | Mark | 40h |
| 62 | 1.2.1.5.4.3 | Apply model to tool | 5d | 2006-06-19 | 2006-06-23 | 61 | 7.5d | 0d |  | Bioinformatics | 40h |
| 63 | 1.2.1.5.4.4 | Develop and Install data service | 2.5d | 2006-06-26 | 2006-06-28 | 62 | 7.5d | 0d |  | Bioinformatics; Sanjeev | 40h |
| 64 | 1.2.1.5.4.5 | Install tool | 5d | 2006-06-28 | 2006-07-05 | 63 | 7.5d |  |  | Bioinformatics | 40h |
| 65 | 1.2.1.6 | **Develop API for non-caBIG systems (Tumor Registry)** | 20d? | 2006-06-05 | 2006-06-30 |  | 10d |  |  | SB | 440h |
| 66 | 1.2.1.6.1 | Develop UML domain model | 15d | 2006-06-05 | 2006-06-23 |  | 15d |  | start no earlier than 2006-06-05 | Ram | 120h |
| 67 | 1.2.1.6.2 | Perform O/R mapping using Hibernate | 15d? | 2006-06-05 | 2006-06-23 |  | 15d |  | start no earlier than 2006-06-05 | Sanjeev | 120h |
| 68 | 1.2.1.6.3 | Perform semantic annotation | 15d? | 2006-06-05 | 2006-06-23 |  | 10d | 0d | start no earlier than 2006-06-05 |  |  |
| 69 | 1.2.1.6.4 | Generate API using caCORE SDK | 5d | 2006-06-26 | 2006-06-30 | 68 | 10d |  |  | Sanjeev | 40h |
| 70 | 1.2.1.7 | **Design,develop and test distributed query engine architecture** | 30d? | 2006-06-05 | 2006-07-14 |  | 0d |  |  | Srini; Ram | 1000h |
| 71 | 1.2.1.7.1 | Finalize federated query schema | 2.5d | 2006-06-05 | 2006-06-07 |  | 27.5d |  | start no earlier than 2006-05-29 | Srini; Ram | 40h |
| 72 | 1.2.1.7.2 | Design distributed query engine - Create UML artifacts | 15d? | 2006-06-05 | 2006-06-23 |  | 15d |  | start no earlier than 2006-05-29 | Srini; Ram | 240h |
| 73 | 1.2.1.7.3 | Code and Test | 30d? | 2006-06-05 | 2006-07-14 |  | 0d |  | start no earlier than 2006-05-29 | Srini | 240h |
| 74 | 1.2.1.8 | **Design, develop and test core architecture for GUI** | 20d? | 2006-06-12 | 2006-07-07 |  | 5d |  |  | Sanjeev; Ram | 800h |
| 75 | 1.2.1.8.1 | Create UML artifacts - class and sequence diagram | 10d? | 2006-06-12 | 2006-06-23 |  | 15d |  | start no earlier than 2006-06-12 | Sanjeev; Ram | 160h |
| 76 | 1.2.1.8.2 | Implement and test core architecture | 10d? | 2006-06-12 | 2006-06-23 |  | 15d |  | start no earlier than 2006-06-12 | Sanjeev; Ram | 160h |
| 77 | 1.2.1.8.3 | Develop prototype | 20d? | 2006-06-12 | 2006-07-07 |  | 5d |  | start no earlier than 2006-06-12 | Sanjeev | 160h |

| ID | WBS | Task | Duration | Start | Finish | Predecessors | Total slack | Free slack | Resources | Work |
| --- | --- | --- | --- | --- | --- | --- | --- | --- | --- | --- |
| 78 | 1.2.1.9 | **Basic testing** | 15d | 2006-06-05 | 2006-06-23 |  | 15d |  | Patrick; Mark | 800h |
| 79 | 1.2.1.9.1 | **Setup testing environment** | 5d | 2006-06-05 | 2006-06-09 |  | 15d | 0d | Patrick | 80h |
| 80 | 1.2.1.9.1.1 | Implement setup/tear down of services | 5d | 2006-06-05 | 2006-06-09 |  | 60d |  | Patrick | 40h |
| 81 | 1.2.1.9.2 | **Domain services** | 10d | 2006-06-05 | 2006-06-16 |  | 20d |  | Patrick | 160h |
| 82 | 1.2.1.9.2.1 | Implement discovery test | 5d | 2006-06-05 | 2006-06-09 |  | 65d | 0d | Patrick | 40h |
| 83 | 1.2.1.9.2.2 | Implement performance test | 5d | 2006-06-12 | 2006-06-16 | 82 | 65d |  | Patrick | 40h |
| 84 | 1.2.1.9.3 | **Distributed query engine** | 10d | 2006-06-12 | 2006-06-23 | 79 | 15d |  | Patrick | 160h |
| 85 | 1.2.1.9.3.1 | Implement discovery test | 5d | 2006-06-12 | 2006-06-16 |  | 60d | 0d | Patrick | 40h |
| 86 | 1.2.1.9.3.2 | Implement performance test | 5d | 2006-06-19 | 2006-06-23 | 85 | 60d |  | Patrick | 40h |
| 87 | 1.2.1.9.4 | **Graphical user interface** | 5d | 2006-06-05 | 2006-06-09 |  | 25d |  | Mark; Patrick | 160h |
| 88 | 1.2.1.9.4.1 | Create draft QA test plan | 5d | 2006-06-05 | 2006-06-09 |  | 70d |  | Mark; Patrick | 80h |
| 89 | 1.2.1.10 | **Security integration** | 15d | 2006-06-05 | 2006-06-23 |  | 15d |  | Patrick; Jeff | 440h |
| 90 | 1.2.1.10.1 | Identify Duke IdP | 10d | 2006-06-05 | 2006-06-16 |  | 20d |  | Jeff | 80h |
| 91 | 1.2.1.10.2 | Integrate Duke IdP with Dorian | 15d | 2006-06-05 | 2006-06-23 |  | 15d |  | Patrick | 120h |
| 92 | 1.2.2 | **Iteration 2** | 30d? | 2006-07-17 | 2006-08-25 | 22 | 0d |  |  | 7286.67h |
| 93 | 1.2.2.1 | **Final use case document** | 10d | 2006-07-17 | 2006-07-28 |  | 20d |  | Patrick | 160h |
| 94 | 1.2.2.1.1 | Finalize problem scenarios | 5d | 2006-07-17 | 2006-07-21 |  | 35d | 0d | Patrick | 40h |
| 95 | 1.2.2.1.2 | Finalize use cases | 5d | 2006-07-24 | 2006-07-28 | 94 | 35d |  | Patrick | 40h |
| 96 | 1.2.2.2 | **Final requirements and specifications document** | 15d | 2006-07-17 | 2006-08-04 |  | 15d |  | Patrick | 240h |
| 97 | 1.2.2.2.1 | Finalize requirements | 5d | 2006-07-17 | 2006-07-21 |  | 30d | 0d | Patrick | 40h |
| 98 | 1.2.2.2.2 | Finalize traceability matrix | 5d | 2006-07-24 | 2006-07-28 | 97 | 30d | 0d | Patrick | 40h |
| 99 | 1.2.2.2.3 | Finalize UML | 5d | 2006-07-31 | 2006-08-04 | 98 | 30d |  | Patrick | 40h |
| 100 | 1.2.2.3 | Draft dataset document (final) | 10d | 2006-07-17 | 2006-07-28 |  | 20d |  | Patrick; Bob; Mark | 240h |
| 101 | 1.2.2.4 | **Dataset preparation** | 20d | 2006-07-17 | 2006-08-11 |  | 10d |  | Mark | 800h |
| 102 | 1.2.2.4.1 | **Tumor registry** | 20d | 2006-07-17 | 2006-08-11 | 33 | 10d |  | Mark | 320h |
| 103 | 1.2.2.4.1.1 | CDE document | 5d | 2006-07-17 | 2006-07-21 |  | 25d | 0d | Mark | 40h |
| 104 | 1.2.2.4.1.2 | Dataset deidentification | 10d | 2006-07-24 | 2006-08-04 | 103 | 25d | 0d | Mark | 80h |
| 105 | 1.2.2.4.1.3 | Expose database | 5d | 2006-08-07 | 2006-08-11 | 104 | 25d |  | Mark | 40h |

| ID | WBS | Task | Duration | Start | Finish | Predecessors | Total slack | Free slack | Constraint | Resources | Work |
| --- | --- | --- | --- | --- | --- | --- | --- | --- | --- | --- | --- |
| 106 | 1.2.2.4.2 | **GEMS Illumina** | 20d | 2006-07-17 | 2006-08-11 |  | 10d |  |  | Mark | 320h |
| 107 | 1.2.2.4.2.1 | CDE document | 5d | 2006-07-17 | 2006-07-21 |  | 25d | 0d |  | Mark | 40h |
| 108 | 1.2.2.4.2.2 | Dataset deidentification | 10d | 2006-07-24 | 2006-08-04 | 107 | 25d | 0d |  | Mark | 80h |
| 109 | 1.2.2.4.2.3 | Expose database | 5d | 2006-08-07 | 2006-08-11 | 108 | 25d |  |  | Mark | 40h |
| 110 | 1.2.2.5 | **Tool installation** | 22.5d | 2006-07-17 | 2006-08-16 |  | 7.5d |  |  | Bioinformatics; Mark | 1686.67h |
| 111 | 1.2.2.5.1 | **caIntegrator** | 22.5d | 2006-07-17 | 2006-08-16 |  | 7.5d |  |  | Bioinformatics; Mark; Srini | 740h |
| 112 | 1.2.2.5.1.1 | Document CDE extension | 5d | 2006-07-17 | 2006-07-21 |  | 7.5d | 0d |  | Mark | 40h |
| 113 | 1.2.2.5.1.2 | Extend model | 5d | 2006-07-24 | 2006-07-28 | 112 | 7.5d | 0d |  | Mark | 40h |
| 114 | 1.2.2.5.1.3 | Apply model to tool | 5d | 2006-07-31 | 2006-08-04 | 113 | 7.5d | 0d |  | Bioinformatics | 40h |
| 115 | 1.2.2.5.1.4 | Develop and Install data service | 2.5d | 2006-08-07 | 2006-08-09 | 114 | 7.5d | 0d |  | Bioinformatics; Srini | 40h |
| 116 | 1.2.2.5.1.5 | Install tool | 5d | 2006-08-09 | 2006-08-16 | 115 | 7.5d |  |  | Bioinformatics | 40h |
| 117 | 1.2.2.5.2 | **CTOM** | 21.67d | 2006-07-17 | 2006-08-15 |  | 8.33d |  |  | Bioinformatics; Mark | 586.67h |
| 118 | 1.2.2.5.2.1 | Evaluate CTOM for appropriate model and APIs per Risk 5 | 5d | 2006-07-17 | 2006-07-21 |  | 25d |  |  | Ram | 40h |
| 119 | 1.2.2.5.2.2 | Document CDE extension | 5d | 2006-07-17 | 2006-07-21 |  | 8.33d | 0d |  | Mark | 40h |
| 120 | 1.2.2.5.2.3 | Extend model | 5d | 2006-07-24 | 2006-07-28 | 119 | 8.33d | 0d |  | Mark | 40h |
| 121 | 1.2.2.5.2.4 | Apply model to tool | 5d | 2006-07-31 | 2006-08-04 | 120 | 8.33d | 0d |  | Bioinformatics | 40h |
| 122 | 1.2.2.5.2.5 | Develop and Install data service | 1.67d | 2006-08-07 | 2006-08-08 | 121 | 8.33d | 0d |  | Bioinformatics; Bill; Ram | 40h |
| 123 | 1.2.2.5.2.6 | Install tool | 5d | 2006-08-08 | 2006-08-15 | 122 | 8.33d |  |  | Bioinformatics | 40h |
| 124 | 1.2.2.6 | **Complete API development for non-caBIG sytems** | 20d? | 2006-07-17 | 2006-08-11 |  | 10d |  |  | SB | 640h |
| 125 | 1.2.2.6.1 | Enhance UML domain model | 20d? | 2006-07-17 | 2006-08-11 |  | 10d |  | start no earlier than 2006-07-10 | Ram | 160h |
| 126 | 1.2.2.6.2 | Complete O/R mapping | 20d? | 2006-07-17 | 2006-08-11 |  | 10d |  | start no earlier than 2006-07-10 | Sanjeev | 160h |
| 127 | 1.2.2.6.3 | Complete semantic annotation | 10d? | 2006-07-17 | 2006-07-28 |  | 10d | 0d | start no earlier than 2006-07-10 | SB | 80h |
| 128 | 1.2.2.6.4 | Generate API using caCORE SDK | 10d? | 2006-07-31 | 2006-08-11 | 127 | 10d |  |  | Sanjeev | 80h |
| 129 | 1.2.2.7 | Implement security | 6.67d | 2006-07-17 | 2006-07-25 |  | 23.33d |  | start no earlier than 2006-07-10 | Srini; Ram; Vinay | 160h |
| 130 | 1.2.2.8 | Develop data services for caBIG/non-caBIG systems | 2.5d | 2006-08-07 | 2006-08-09 |  | 12.5d |  | start no earlier than 2006-08-07 | Bill; Sanjeev; Srini; Ram | 80h |

| ID | WBS | Task | Duration | Start | Finish | Predecessors | Total slack | Free slack | Constraint | Resources | Work |
| --- | --- | --- | --- | --- | --- | --- | --- | --- | --- | --- | --- |
| 131 | 1.2.2.9 | **Design develop and test distributed query engine architecture** | 30d | 2006-07-17 | 2006-08-25 |  | 0d |  |  | Srini | 560h |
| 132 | 1.2.2.9.1 | Enhance UML artifacts | 10d | 2006-07-17 | 2006-07-28 |  | 20d |  | start no earlier than 2006-07-10 | Srini | 80h |
| 133 | 1.2.2.9.2 | Code and Test | 30d | 2006-07-17 | 2006-08-25 |  | 0d |  | start no earlier than 2006-07-10 | Srini | 240h |
| 134 | 1.2.2.10 | **Design, develop and test GUI** | 30d? | 2006-07-17 | 2006-08-25 |  | 0d |  |  | Sanjeev | 640h |
| 135 | 1.2.2.10.1 | Enhance UML artifacts | 20d? | 2006-07-17 | 2006-08-11 |  | 10d |  | finish no earlier than 2006-08-04 | Sanjeev | 160h |
| 136 | 1.2.2.10.2 | Enhance prototype | 30d | 2006-07-17 | 2006-08-25 |  | 0d |  | start no earlier than 2006-07-10 | Sanjeev | 240h |
| 137 | 1.2.2.11 | **System testing** | 20d | 2006-07-17 | 2006-08-11 |  | 10d |  |  | Patrick; Mark | 2080h |
| 138 | 1.2.2.11.1 | Draft testing report | 20d | 2006-07-17 | 2006-08-11 |  | 10d |  |  | Patrick; Mark | 320h |
| 139 | 1.2.2.11.2 | **Domain services** | 20d | 2006-07-17 | 2006-08-11 |  | 10d |  |  | Patrick; Mark | 600h |
| 140 | 1.2.2.11.2.1 | Translate use cases into queries | 10d | 2006-07-17 | 2006-07-28 |  | 10d | 0d |  | Patrick; Mark | 160h |
| 141 | 1.2.2.11.2.2 | Implement base data test | 5d | 2006-07-31 | 2006-08-04 | 140 | 10d | 0d |  | Patrick; Mark | 80h |
| 142 | 1.2.2.11.2.3 | Implement security test | 5d | 2006-08-07 | 2006-08-11 | 141 | 10d |  |  | Patrick | 40h |
| 143 | 1.2.2.11.3 | **Distributed query engine** | 20d | 2006-07-17 | 2006-08-11 |  | 10d |  |  | Patrick; Mark | 600h |
| 144 | 1.2.2.11.3.1 | Translate use cases into queries | 10d | 2006-07-17 | 2006-07-28 |  | 10d | 0d |  | Patrick; Mark | 160h |
| 145 | 1.2.2.11.3.2 | Implement base data test | 5d | 2006-07-31 | 2006-08-04 | 144 | 10d | 0d |  | Patrick; Mark | 80h |
| 146 | 1.2.2.11.3.3 | Implement security test | 5d | 2006-08-07 | 2006-08-11 | 145 | 10d |  |  | Patrick | 40h |
| 147 | 1.2.2.11.4 | **Graphical user interface** | 15d | 2006-07-17 | 2006-08-04 |  | 15d |  |  | Mark | 240h |
| 148 | 1.2.2.11.4.1 | Final QA test plan | 15d | 2006-07-17 | 2006-08-04 |  | 15d |  |  | Mark | 120h |
| 149 | 1.3 | **Construction** | 40d | 2006-08-28 | 2006-10-20 | 21 | 0d |  |  |  | 3780h |
| 150 | 1.3.1 | **Iteration 1** | 20d | 2006-08-28 | 2006-09-22 |  | 0d |  |  |  | 2060h |
| 151 | 1.3.1.1 | Final dataset document (draft) | 20d | 2006-08-28 | 2006-09-22 |  | 0d |  |  |  |  |
| 152 | 1.3.1.2 | **Dataset preparation** | 10d | 2006-08-28 | 2006-09-08 |  | 10d |  |  |  | 160h |
| 153 | 1.3.1.2.1 | **Construct demo datasets** | 10d | 2006-08-28 | 2006-09-08 |  | 10d |  |  | Mark | 160h |
| 154 | 1.3.1.2.1.1 | Construct MAW3 dataset | 5d | 2006-08-28 | 2006-09-01 |  | 10d | 0d |  | Mark | 40h |
| 155 | 1.3.1.2.1.2 | Construct DSR dataset | 5d | 2006-09-04 | 2006-09-08 | 154 | 10d |  |  | Mark | 40h |
| 156 | 1.3.1.3 | Enhance data services for caBIG/non-caBIG systems | 5d | 2006-08-28 | 2006-09-01 |  | 15d |  | start no earlier than 2006-08-21 | SB | 40h |
| 157 | 1.3.1.4 | Implement distributed query engine | 20d | 2006-08-28 | 2006-09-22 |  | 0d |  | start no earlier than 2006-08-21 | SB | 160h |
| 158 | 1.3.1.5 | Implement GUI | 20d | 2006-08-28 | 2006-09-22 |  | 0d |  | start no earlier than 2006-08-21 | SB | 160h |

| ID | WBS | Task | Duration | Start | Finish | Predecessors | Total slack | Free slack | Constraint | Resources | Work |
| --- | --- | --- | --- | --- | --- | --- | --- | --- | --- | --- | --- |
| 159 | 1.3.1.6 | **Testing** | 20d | 2006-08-28 | 2006-09-22 |  | 0d |  |  | Patrick; Mark | 1540h |
| 160 | 1.3.1.6.1 | **Domain services** | 20d | 2006-08-28 | 2006-09-22 |  | 0d |  |  | Patrick; Mark | 520h |
| 161 | 1.3.1.6.1.1 | Implement metadata test | 5d | 2006-08-28 | 2006-09-01 |  | 15d |  |  | Patrick | 40h |
| 162 | 1.3.1.6.1.2 | Implement data test | 20d | 2006-08-28 | 2006-09-22 |  | 0d |  |  | Mark | 160h |
| 163 | 1.3.1.6.2 | **Distributed query engine** | 20d | 2006-08-28 | 2006-09-22 |  | 0d |  |  | Patrick; Mark | 520h |
| 164 | 1.3.1.6.2.1 | Implement metadata test | 5d | 2006-08-28 | 2006-09-01 |  | 15d |  |  | Patrick | 40h |
| 165 | 1.3.1.6.2.2 | Implement data test | 20d | 2006-08-28 | 2006-09-22 |  | 0d |  |  | Mark | 160h |
| 166 | 1.3.1.6.3 | **Graphical user interface** | 3.75d | 2006-08-28 | 2006-08-31 |  | 16.25d |  |  | Mark; domain expert | 180h |
| 167 | 1.3.1.6.3.1 | Perform QA tests | 3.75d | 2006-08-28 | 2006-08-31 |  | 16.25d |  |  | Mark; Raj; Janet; TBD | 120h |
| 168 | 1.3.2 | **Iteration 2** | 20d | 2006-09-25 | 2006-10-20 | 150 | 0d |  |  |  | 1720h |
| 169 | 1.3.2.1 | Final dataset document (final) | 15d | 2006-09-25 | 2006-10-13 |  | 5d |  |  |  |  |
| 170 | 1.3.2.2 | **Dataset preparation** | 10d | 2006-09-25 | 2006-10-06 |  | 10d |  |  |  | 160h |
| 171 | 1.3.2.2.1 | **Construct demo datasets** | 10d | 2006-09-25 | 2006-10-06 |  | 10d |  |  | Mark | 160h |
| 172 | 1.3.2.2.1.1 | Construct tumor registry dataset | 5d | 2006-09-25 | 2006-09-29 |  | 10d | 0d |  | Mark | 40h |
| 173 | 1.3.2.2.1.2 | Construct GEMS Illumina dataset | 5d | 2006-10-02 | 2006-10-06 | 172 | 10d |  |  | Mark | 40h |
| 174 | 1.3.2.3 | Develop data service for caTRIP | 5d | 2006-09-25 | 2006-09-29 |  | 15d |  | start no earlier than 2006-09-18 | SB | 40h |
| 175 | 1.3.2.4 | Complete distributed query engine | 20d | 2006-09-25 | 2006-10-20 |  | 0d |  | start no earlier than 2006-09-18 | SB | 160h |
| 176 | 1.3.2.5 | Complete GUI | 20d | 2006-09-25 | 2006-10-20 |  | 0d |  | start no earlier than 2006-09-18 | SB | 160h |
| 177 | 1.3.2.6 | System Testing | 20d | 2006-09-25 | 2006-10-20 |  | 0d |  | start no earlier than 2006-09-18 | SB | 160h |
| 178 | 1.3.2.7 | Develop draft technical architecture guide | 10d | 2006-10-02 | 2006-10-13 |  | 5d |  | start no earlier than 2006-10-02 | SB | 80h |
| 179 | 1.3.2.8 | **Testing** | 20d | 2006-09-25 | 2006-10-20 |  | 0d |  |  |  | 960h |
| 180 | 1.3.2.8.1 | **Domain services** | 20d | 2006-09-25 | 2006-10-20 |  | 0d |  |  | Mark | 320h |
| 181 | 1.3.2.8.1.1 | Final testing report | 20d | 2006-09-25 | 2006-10-20 |  | 0d |  |  | Mark | 160h |
| 182 | 1.3.2.8.2 | **Distributed query engine** | 20d | 2006-09-25 | 2006-10-20 |  | 0d |  |  | Mark | 320h |
| 183 | 1.3.2.8.2.1 | Final testing report | 20d | 2006-09-25 | 2006-10-20 |  | 0d |  |  | Mark | 160h |

| ID | WBS | Task | Duration | Start | Finish | Predecessors | Total slack | Free slack | Constraint | Resources | Work |
| --- | --- | --- | --- | --- | --- | --- | --- | --- | --- | --- | --- |
| 184 | 1.3.2.8.3 | **Graphical user interface** | 20d | 2006-09-25 | 2006-10-20 |  | 0d |  |  | Mark | 320h |
| 185 | 1.3.2.8.3.1 | Final testing report | 20d | 2006-09-25 | 2006-10-20 |  | 0d |  |  | Mark | 160h |
| 186 | 1.4 | **Transition** | 10d | 2006-10-23 | 2006-11-03 | 149 | 0d |  |  |  | 80h |
| 187 | 1.4.1 | Final testing | 10d | 2006-10-23 | 2006-11-03 |  | 0d |  |  |  |  |
| 188 | 1.4.2 | **Final documentation** | 10d | 2006-10-23 | 2006-11-03 |  | 0d |  |  |  | 80h |
| 189 | 1.4.2.1 | Complete technical architecture guide | 10d | 2006-10-23 | 2006-11-03 |  | 0d |  | start no earlier than 2006-10-16 | SB | 80h |
| 190 | 1.5 | **Meetings** | 107d | 2006-05-01 | 2006-09-26 |  | 28d |  |  |  | 56h |
| 191 | 1.5.1 | Project kickoff | 1d | 2006-05-01 | 2006-05-01 |  | 148d | 0d |  | Jamie; Bob; Patrick | 24h |
| 192 | 1.5.2 | First F2F | 2d | 2006-05-24 | 2006-05-25 |  | 131d |  | finish no earlier than 2006-05-25 | Everyone | 16h |
| 193 | 1.5.3 | Second F2F | 2d | 2006-09-25 | 2006-09-26 |  | 43d |  | start no earlier than 2006-09-25 | Everyone | 16h |
| 194 | 1.6 | **Deliverables** | 132d | 2006-05-02 | 2006-11-01 | 191 | 2d |  |  |  | 160h |
| 195 | 1.6.1 | Submit project management plan | 1d | 2006-06-01 | 2006-06-01 |  | 111d |  | start no earlier than 2006-06-01 | Patrick | 8h |
| 196 | 1.6.2 | Submit communications plan | 1d | 2006-06-01 | 2006-06-01 |  | 111d |  | start no earlier than 2006-06-01 | Patrick | 8h |
| 197 | 1.6.3 | Submit risk management matrix | 1d | 2006-06-01 | 2006-06-01 |  | 111d |  | start no earlier than 2006-06-01 | Patrick | 8h |
| 198 | 1.6.4 | Submit draft use case document | 1d | 2006-07-03 | 2006-07-03 |  | 89d |  | start no earlier than 2006-07-03 | Patrick | 8h |
| 199 | 1.6.5 | Submit final use case document | 1d | 2006-08-01 | 2006-08-01 |  | 68d |  | start no earlier than 2006-08-01 | Patrick | 8h |
| 200 | 1.6.6 | Submit draft requirements and specifications document | 1d | 2006-06-01 | 2006-06-01 |  | 111d |  | start no earlier than 2006-06-01 | Patrick | 8h |
| 201 | 1.6.7 | Submit final requirements and specifications document | 1d | 2006-07-03 | 2006-07-03 |  | 89d |  | start no earlier than 2006-07-03 | Patrick | 8h |
| 202 | 1.6.8 | Submit draft UML model | 1d | 2006-08-01 | 2006-08-01 |  | 68d |  | start no earlier than 2006-08-01 | Patrick | 8h |
| 203 | 1.6.9 | Submit draft API | 1d | 2006-11-01 | 2006-11-01 |  | 2d |  | start no earlier than 2006-11-01 | Patrick | 8h |
| 204 | 1.6.10 | Submit XMI file | 1d | 2006-10-02 | 2006-10-02 |  | 24d |  | start no earlier than 2006-10-02 | Patrick | 8h |
| 205 | 1.6.11 | Submit CDE use report | 1d | 2006-11-01 | 2006-11-01 |  | 2d |  | start no earlier than 2006-11-01 | Patrick | 8h |
| 206 | 1.6.12 | Submit draft test approach | 1d | 2006-06-01 | 2006-06-01 |  | 111d |  | start no earlier than 2006-06-01 | Patrick | 8h |
| 207 | 1.6.13 | Submit final test approach | 1d | 2006-07-03 | 2006-07-03 |  | 89d |  | start no earlier than 2006-07-03 | Patrick | 8h |
| 208 | 1.6.14 | Submit draft datasets | 1d | 2006-08-01 | 2006-08-01 |  | 68d |  | start no earlier than 2006-08-01 | Patrick | 8h |
| 209 | 1.6.15 | Submit final datasets | 1d | 2006-11-01 | 2006-11-01 |  | 2d |  | start no earlier than 2006-11-01 | Patrick | 8h |
| 210 | 1.6.16 | Submit draft prototype code | 1d | 2006-08-01 | 2006-08-01 |  | 68d |  | start no earlier than 2006-08-01 | Patrick | 8h |
| 211 | 1.6.17 | Submit final prototype code | 1d | 2006-11-01 | 2006-11-01 |  | 2d |  | start no earlier than 2006-11-01 | Patrick | 8h |
| 212 | 1.6.18 | Submit testing report for draft prototype | 1d | 2006-08-01 | 2006-08-01 |  | 68d |  | start no earlier than 2006-08-01 | Patrick | 8h |
| 213 | 1.6.19 | Submit testing report for final prototype | 1d | 2006-11-01 | 2006-11-01 |  | 2d |  | start no earlier than 2006-11-01 | Patrick | 8h |
| 214 | 1.6.20 | Submit technical/architectural guide | 1d | 2006-05-02 | 2006-05-02 |  | 133d |  |  | Patrick | 8h |

| ID | WBS | Task | Duration | Start | Finish | Total slack |
| --- | --- | --- | --- | --- | --- | --- |
| 215 | 2 | **Phase II** | 1d? | 2006-05-01 | 2006-05-01 | 134d |
| 216 | 2.1 | Management | 1d? | 2006-05-01 | 2006-05-01 | 149d |
| 217 | 2.2 | Use case definition | 1d? | 2006-05-01 | 2006-05-01 | 149d |
| 218 | 2.3 | Dataset migration | 1d? | 2006-05-01 | 2006-05-01 | 149d |
| 219 | 2.4 | Tool installation | 1d? | 2006-05-01 | 2006-05-01 | 149d |
| 220 | 2.5 | Testing | 1d? | 2006-05-01 | 2006-05-01 | 149d |
